# trWorkbench 1.0

Schedule from MS Project, 2008-03-19 to 2008-09-08, A marks actual dates.
NCI

## Calendars

- Standard: Mon-Fri 08:00-12:00, 13:00-17:00; Sat-Sun off. Exceptions (off unless hours are given): 2008-05-26, 2008-07-04.

## Resources

| Resource |
| --- |
| SM |
| ET |
| TJ |
| MH |
| SJ |
| SM |
| WF |
| TBD1 |
| TBD2 |
| MR |
| ML |

## Schedule

| ID | WBS | Task | Duration | Start | Finish | Predecessors | Complete | Remaining | Total slack | Free slack | Constraint | Resources | Work | Actual work |
| --- | --- | --- | --- | --- | --- | --- | --- | --- | --- | --- | --- | --- | --- | --- |
| 1 | 1 | **caIntegrator2 1.0** | 122d? | 2008-03-19 A | 2008-09-08 |  | 28% | 88.05d? | 0d |  |  |  | 5402.67h | 1448h |
| 2 | 1.1 | **Inception phase** | 23d? | 2008-03-19 A | 2008-04-18 |  | 5% | 21.76d? | 93d |  |  |  | 752h | 32h |
| 3 | 1.1.1 | **Inception Iteration 1** | 23d? | 2008-03-19 A | 2008-04-18 |  | 5% | 21.76d? | 93d |  |  |  | 752h | 32h |
| 4 | 1.1.1.1 | **Requirements** | 16d? | 2008-03-19 A | 2008-04-09 |  | 29% | 11.43d? | 100d |  |  |  | 112h | 32h |
| 5 | 1.1.1.1.1 | Develop Vision | 2d? | 2008-03-19 A | 2008-03-20 A |  | 100% |  |  |  |  | SM | 16h | 16h |
| 6 | 1.1.1.1.2 | Find Actors and Use Cases | 2d | 2008-03-19 A | 2008-03-20 A |  | 100% |  |  |  |  | ET | 16h | 16h |
| 7 | 1.1.1.1.3 | Detail a Use Case (multiple) | 5d | 2008-03-27 | 2008-04-02 | 6 |  |  | 100d | 0d | finish no earlier than 2008-04-02 | ET | 40h |  |
| 8 | 1.1.1.1.4 | Finalize Use Case Model | 5d | 2008-04-03 | 2008-04-09 | 7 |  |  | 93d |  | start no earlier than 2008-04-02 | ET | 40h |  |
| 9 | 1.1.1.2 | **Analysis and Design** | 18d | 2008-03-26 | 2008-04-18 |  |  |  | 93d |  |  |  | 432h |  |
| 10 | 1.1.1.2.1 | Architectural Analysis | 4d | 2008-03-26 | 2008-03-31 |  |  |  | 100d |  | start no earlier than 2008-03-26 | ET [50%]; MH [50%] | 24h |  |
| 11 | 1.1.1.2.2 | **Construct Architectural Proof of Concept** | 17d | 2008-03-27 | 2008-04-18 |  |  |  | 93d |  |  |  | 408h |  |
| 12 | 1.1.1.2.2.1 | Investigate clinical data representation approaches | 12d | 2008-03-27 | 2008-04-11 |  |  |  | 86d | 0d | start no earlier than 2008-03-27 | MH | 96h |  |
| 13 | 1.1.1.2.2.2 | Analyse genomic data storage and retrieval | 8d | 2008-04-02 | 2008-04-11 |  |  |  | 91d |  | finish no earlier than 2008-04-11 | ET; MH; TJ | 192h |  |
| 14 | 1.1.1.2.2.3 | Define integrated object model (clinical, genomic, imaging) | 5d | 2008-04-14 | 2008-04-18 | 12 |  |  | 86d |  |  | ET; MH; TJ | 120h |  |
| 15 | 1.1.1.3 | **UI Analysis** | 7d? | 2008-03-27 | 2008-04-04 |  |  |  | 103d |  |  |  | 56h |  |
| 16 | 1.1.1.3.1 | Analysis of existing caIntegrator UI and Analysis tools (KM Plots, GenePattern etc) | 7d? | 2008-03-27 | 2008-04-04 |  |  |  | 96d |  | finish no earlier than 2008-04-04 | TJ | 56h |  |
| 17 | 1.1.1.4 | **Project Management** | 23d? | 2008-03-19 | 2008-04-18 |  |  |  | 93d |  |  |  | 152h |  |
| 18 | 1.1.1.4.1 | Develop Iteration Plan: I1 | 3d | 2008-03-19 | 2008-03-21 |  |  |  | 106d |  |  | SJ | 24h |  |
| 19 | 1.1.1.4.2 | Identify and Assess Risks | 10d | 2008-03-24 | 2008-04-04 |  |  |  | 96d |  | finish no earlier than 2008-04-04 | SJ | 80h |  |
| 20 | 1.1.1.4.3 | Develop Iteration Plan: E1 | 5d? | 2008-04-14 | 2008-04-18 |  |  |  | 86d |  | finish no earlier than 2008-04-18 | SJ | 40h |  |
| 21 | 1.1.1.4.4 | Assess Iteration | 1d? | 2008-04-18 | 2008-04-18 |  |  |  | 86d |  | start no earlier than 2008-04-18 | SJ | 8h |  |
| 22 | 1.1.1.5 | **Environment** | 5d? | 2008-04-14 | 2008-04-18 |  |  |  | 93d |  |  |  |  |  |
| 23 | 1.1.1.5.1 | Setup Tools | 5d? | 2008-04-14 | 2008-04-18 |  |  |  | 53d |  | finish no earlier than 2008-04-18 |  |  |  |
| 24 | 1.2 | Inception Complete | 1d? | 2008-04-18 | 2008-04-18 |  |  |  | 0d |  | finish no earlier than 2008-04-18 |  |  |  |

Notes:
- 5: - Already have Subha's Vision content / - Record Features (in GForge) / - Record non-functional requirements at this level (will be in Supplementary Specification in Elaboration)
- 10: Develop Architecture Overview / Survey Available Assets / Define the High-Level Organization of Subsystems / Identify Key Abstractions / Develop Deployment Overview
- 19: - Ongoing
- 23: GForge / Subversion / Enterprise Architect / Choose IDE approach

| ID | WBS | Task | Duration | Start | Finish | Predecessors | Complete | Remaining | Total slack | Free slack | Constraint | Resources | Work | Actual work |
| --- | --- | --- | --- | --- | --- | --- | --- | --- | --- | --- | --- | --- | --- | --- |
| 25 | 1.3 | **Elaboration Phase** | 99d? | 2008-04-21 A | 2008-09-08 | 24 | 31% | 68.13d? | 0d |  |  |  | 4650.67h | 1416h |
| 26 | 1.3.1 | **Elaboration - Iteration 1** | 20d? | 2008-04-21 A | 2008-05-16 |  | 80% | 4.06d? | 73d |  |  |  | 1738.67h | 1416h |
| 27 | 1.3.1.1 | **Project Management** | 20d? | 2008-04-21 A | 2008-05-16 A |  | 100% |  |  |  |  |  | 328h | 328h |
| 28 | 1.3.1.1.1 | Iteration Plan | 4d? | 2008-04-28 A | 2008-05-01 A |  | 100% |  |  |  | start no earlier than 2008-04-28 | SJ | 32h | 32h |
| 29 | 1.3.1.1.2 | Risk Management | 17d? | 2008-04-24 A | 2008-05-16 A |  | 100% |  |  |  | start no earlier than 2008-04-24 | SJ | 136h | 136h |
| 30 | 1.3.1.1.3 | Manage communication (listserv, skype etc) | 20d? | 2008-04-21 A | 2008-05-16 A |  | 100% |  |  |  | finish no earlier than 2008-05-16 | SJ | 160h | 160h |
| 31 | 1.3.1.2 | **Requirements** | 8d? | 2008-04-28 A | 2008-05-07 |  | 33% | 5.33d? | 80d |  |  |  | 288h | 96h |
| 32 | 1.3.1.2.1 | **Revise Inception Use Cases** | 4d | 2008-04-28 A | 2008-05-01 A |  | 100% |  |  |  |  |  | 32h | 32h |
| 33 | 1.3.1.2.1.1 | Gene Expression | 4d | 2008-04-28 A | 2008-05-01 A |  | 100% |  |  |  | start no earlier than 2008-04-28 | ET | 32h | 32h |
| 34 | 1.3.1.2.2 | **Elaboration Use Case definition** | 8d? | 2008-04-28 A | 2008-05-07 |  | 25% | 6d? | 80d |  |  |  | 256h | 64h |
| 35 | 1.3.1.2.2.1 | Imaging | 8d? | 2008-04-28 A | 2008-05-07 A |  | 100% |  |  |  | finish no earlier than 2008-05-07 | ET | 64h | 64h |
| 36 | 1.3.1.2.2.2 | Methylation data | 8d? | 2008-04-28 | 2008-05-07 |  |  |  | 73d |  | start no earlier than 2008-04-28 | ET | 64h |  |
| 37 | 1.3.1.2.2.3 | Update study | 8d? | 2008-04-28 | 2008-05-07 |  |  |  | 73d |  | start no earlier than 2008-04-28 | ET | 64h |  |
| 38 | 1.3.1.2.2.4 | Security requirements | 8d? | 2008-04-28 | 2008-05-07 |  |  |  | 73d |  | start no earlier than 2008-04-28 | ET | 64h |  |
| 39 | 1.3.1.3 | **Analysis and Design** | 15d? | 2008-04-21 A | 2008-05-09 |  | 85% | 2.27d? | 31d | 2d |  |  | 634.67h | 528h |
| 40 | 1.3.1.3.1 | Identify subsystems | 10d? | 2008-04-21 A | 2008-05-02 A |  | 100% |  |  |  | finish no earlier than 2008-05-02 | MH | 80h | 80h |
| 41 | 1.3.1.3.2 | Identify risk characteristics | 8d? | 2008-04-21 A | 2008-04-30 A |  | 100% |  |  |  | start no earlier than 2008-04-21 | MH | 64h | 64h |
| 42 | 1.3.1.3.3 | **Use-case design** | 10d | 2008-04-21 A | 2008-05-02 |  | 50% | 5d | 36d |  |  |  | 266.67h | 160h |
| 43 | 1.3.1.3.3.1 | manage queries (create and execute genomic with clinical) | 10d | 2008-04-21 | 2008-05-02 |  |  |  | 36d |  | finish no earlier than 2008-05-02 | MH; ET | 106.67h |  |
| 44 | 1.3.1.3.3.2 | Perform Analysis (genepattern) | 10d | 2008-04-21 A | 2008-05-02 A |  | 100% |  |  |  |  | MH; TJ | 160h | 160h |
| 45 | 1.3.1.3.4 | Object Model | 10d | 2008-04-21 A | 2008-05-02 A |  | 100% |  |  |  |  | MH | 80h | 80h |
| 46 | 1.3.1.3.5 | caDSR metadata management | 8d | 2008-04-30 A | 2008-05-09 A |  | 100% |  |  |  | start no earlier than 2008-04-30 | MH | 64h | 64h |
| 47 | 1.3.1.3.6 | Implementation model | 10d | 2008-04-21 A | 2008-05-02 A |  | 100% |  |  |  |  | MH | 80h | 80h |
| 48 | 1.3.1.4 | **Implementation** | 15d? | 2008-04-28 A | 2008-05-16 |  | 96% | 0.6d? | 73d |  |  |  | 280h | 272h |
| 49 | 1.3.1.4.1 | HTP data management | 10d | 2008-05-05 A | 2008-05-16 A |  | 100% |  |  |  | start no earlier than 2008-05-05 | ET | 80h | 80h |
| 50 | 1.3.1.4.2 | Query | 10d | 2008-05-05 A | 2008-05-16 A |  | 100% |  |  |  | start no earlier than 2008-05-05 | ET; TJ | 160h | 160h |
| 51 | 1.3.1.4.3 | caCore Code Generation | 5d? | 2008-04-28 A | 2008-05-02 |  | 80% | 1d? | 76d |  | start no earlier than 2008-04-28 | ET | 40h | 32h |

| ID | WBS | Task | Type | Duration | Start | Finish | Predecessors | Complete | Total slack | Free slack | Constraint | Resources | Work | Actual work |
| --- | --- | --- | --- | --- | --- | --- | --- | --- | --- | --- | --- | --- | --- | --- |
| 52 | 1.3.1.5 | **Test** |  | 3d | 2008-05-14 | 2008-05-16 |  |  | 29d | 0d |  |  |  |  |
| 53 | 1.3.1.5.1 | Selenium testing framework(stretch) |  | 3d | 2008-05-14 | 2008-05-16 | 39 |  | 29d |  | finish no earlier than 2008-05-16 |  |  |  |
| 54 | 1.3.1.6 | **Environment** |  | 4d | 2008-04-28 A | 2008-05-01 A |  | 100% |  |  |  |  | 48h | 48h |
| 55 | 1.3.1.6.1 | Eclipse configuration |  | 2d | 2008-04-29 A | 2008-04-30 A |  | 100% |  |  | finish no earlier than 2008-04-30 | ET | 16h | 16h |
| 56 | 1.3.1.6.2 | CI environment |  | 2d | 2008-04-28 A | 2008-04-29 A |  | 100% |  |  | finish no earlier than 2008-04-29 | ET | 16h | 16h |
| 57 | 1.3.1.6.3 | ANT |  | 2d | 2008-04-30 A | 2008-05-01 A |  | 100% |  |  | finish no earlier than 2008-05-01 | ET | 16h | 16h |
| 58 | 1.3.1.7 | **Configuration and Change Management** |  | 1d? | 2008-05-16 | 2008-05-16 |  |  | 73d |  |  |  | 16h |  |
| 59 | 1.3.1.7.1 | Set up defect tracker |  | 1d? | 2008-05-16 | 2008-05-16 |  |  | 73d |  | finish no earlier than 2008-05-16 | ET | 8h |  |
| 60 | 1.3.1.7.2 | Set up feature request tracker |  | 1d? | 2008-05-16 | 2008-05-16 |  |  | 73d |  | finish no earlier than 2008-05-16 | ET | 8h |  |
| 61 | 1.3.1.8 | **Deployment** |  | 16d | 2008-04-21 A | 2008-05-12 A |  | 100% |  |  |  |  | 144h | 144h |
| 62 | 1.3.1.8.1 | Get DEV environment |  | 8d | 2008-04-21 A | 2008-04-30 A |  | 100% |  |  | finish no earlier than 2008-04-30 | SJ | 64h | 64h |
| 63 | 1.3.1.8.2 | ARC document (Draft) |  | 3d | 2008-04-28 A | 2008-04-30 A |  | 100% |  |  | start no earlier than 2008-04-28 | SJ | 24h | 24h |
| 64 | 1.3.1.8.3 | Identify and setup access for NCIA, caArray and CTMS |  | 7d | 2008-05-02 A | 2008-05-12 A |  | 100% |  |  | start no earlier than 2008-05-02 | SJ | 56h | 56h |
| 65 | 1.3.1.9 | Elaboration 1 Complete | milestone | 0d | 2008-05-16 | 2008-05-16 | 52 |  | 29d | 0d |  |  |  |  |
| 66 | 1.3.2 | **Elaboration - Iteration 2** |  | 33d? | 2008-05-19 | 2008-07-03 | 65 |  | 10d | 0d |  |  | 1208h |  |
| 67 | 1.3.2.1 | **Project Management** |  | 12d? | 2008-05-29 | 2008-06-13 |  |  | 24d |  |  |  | 32h |  |
| 68 | 1.3.2.1.1 | Schedule |  | 2d | 2008-05-29 | 2008-05-30 |  |  | 34d |  | finish no earlier than 2008-05-30 | SJ | 16h |  |
| 69 | 1.3.2.1.2 | Risk Management |  | 1d? | 2008-06-13 | 2008-06-13 |  |  | 24d |  | finish no earlier than 2008-06-13 | SJ | 8h |  |
| 70 | 1.3.2.1.3 | E2 Iteration Assessment |  | 1d? | 2008-06-13 | 2008-06-13 |  |  | 24d |  | finish no earlier than 2008-06-13 | SJ | 8h |  |
| 71 | 1.3.2.2 | **Requirements** |  | 11.5d? | 2008-05-29 | 2008-06-13 |  |  | 24d |  |  |  | 376h |  |
| 72 | 1.3.2.2.1 | Modify Vision Document |  | 2d | 2008-06-06 | 2008-06-09 |  |  | 28d |  | finish no earlier than 2008-06-09 | SJ | 16h |  |
| 73 | 1.3.2.2.2 | Draft Storyboard for caIntegrator2 |  | 2d | 2008-06-12 | 2008-06-13 |  |  | 20d |  | start no earlier than 2008-06-12 | SJ | 16h |  |
| 74 | 1.3.2.2.3 | Draft Poster for caBIG Annual meeting |  | 2d | 2008-06-06 | 2008-06-09 |  |  | 28d |  | finish no earlier than 2008-06-09 | SJ | 16h |  |
| 75 | 1.3.2.2.4 | Wireframes for UC |  | 6.5d | 2008-05-29 | 2008-06-06 |  |  | 29d |  | finish no earlier than 2008-06-06 | MR; WF | 104h |  |
| 76 | 1.3.2.2.5 | Review wireframes |  | 6d | 2008-06-05 | 2008-06-12 |  |  | 21d |  | start no earlier than 2008-06-05 | WF; MR; SM | 144h |  |
| 77 | 1.3.2.2.6 | Develop User Interface |  | 8d | 2008-06-03 | 2008-06-12 |  |  | 21d |  | start no earlier than 2008-06-03 | MR | 64h |  |
| 78 | 1.3.2.2.7 | Internal Review of Use Cases/Vision |  | 1d? | 2008-06-05 | 2008-06-05 |  |  | 30d |  | finish no earlier than 2008-06-05 |  |  |  |
| 79 | 1.3.2.2.8 | External Review of Use Cases/Vision |  | 1d? | 2008-06-12 | 2008-06-12 |  |  | 25d |  | finish no earlier than 2008-06-12 |  |  |  |
| 80 | 1.3.2.2.9 | Requirements Management Plan |  | 1d | 2008-06-03 | 2008-06-03 |  |  | 28d |  | start no earlier than 2008-06-03 | ET | 8h |  |
| 81 | 1.3.2.2.10 | Set uprequirements management environment |  | 1d | 2008-06-04 | 2008-06-04 |  |  | 27d |  | start no earlier than 2008-06-04 | ET | 8h |  |

Notes:
- 57: Check the options for using MAVEN - automate the process with Paul.

| ID | WBS | Task | Duration | Start | Finish | Predecessors | Total slack | Free slack | Constraint | Resources | Work |
| --- | --- | --- | --- | --- | --- | --- | --- | --- | --- | --- | --- |
| 82 | 1.3.2.3 | **Analysis and Design** | 27d? | 2008-05-27 | 2008-07-02 |  | 11d |  |  |  | 120h |
| 83 | 1.3.2.3.1 | Use-Case Design: Use Workspace | 1d? | 2008-05-27 | 2008-05-27 |  | 34d | 10d | start no earlier than 2008-05-27 | ET | 8h |
| 84 | 1.3.2.3.2 | Use-Case Design: Deploy Study | 2d | 2008-05-29 | 2008-05-30 |  | 26d | 0d | start no earlier than 2008-05-29 | ET | 16h |
| 85 | 1.3.2.3.3 | Use-Case Design: Manage Queries | 2d | 2008-06-11 | 2008-06-12 |  | 9d | 1d | start no earlier than 2008-06-11 | ET | 16h |
| 86 | 1.3.2.3.4 | Use-Case Design: Perform Analysis | 2d | 2008-06-17 | 2008-06-18 |  | 15d | 6d | start no earlier than 2008-06-17 | ET | 16h |
| 87 | 1.3.2.3.5 | Draft Software Architecture Document | 5d | 2008-05-27 | 2008-06-02 |  | 32d |  | start no earlier than 2008-05-27 | MH | 40h |
| 88 | 1.3.2.3.6 | Final Software Architecture Document | 3d | 2008-06-30 | 2008-07-02 |  | 10d |  | start no earlier than 2008-06-30 | MH | 24h |
| 89 | 1.3.2.4 | **Implementation** | 33d? | 2008-05-19 | 2008-07-03 |  | 10d |  |  |  | 552h |
| 90 | 1.3.2.4.1 | Complete caCORE integration | 5d? | 2008-05-19 | 2008-05-23 |  | 37d |  | start no earlier than 2008-05-19 | MH | 40h |
| 91 | 1.3.2.4.2 | Implement Deploy Study | 7d | 2008-06-02 | 2008-06-10 | 84 | 26d |  | start no earlier than 2008-06-02 | ET; MH; TJ | 168h |
| 92 | 1.3.2.4.3 | Implement Use Workspace | 2d | 2008-06-11 | 2008-06-12 | 83 | 24d |  | start no earlier than 2008-06-11 | TJ; MH; ET | 48h |
| 93 | 1.3.2.4.4 | Implement Manage Queries | 9d | 2008-06-16 | 2008-06-26 | 85 | 8d | 0d | start no earlier than 2008-06-16 | TJ; MH; ET | 216h |
| 94 | 1.3.2.4.5 | Implement Perform Data Analysis: simple GenePattern integration | 5d | 2008-06-27 | 2008-07-03 | 86 | 8d |  | start no earlier than 2008-06-27 | TJ; MH | 80h |
| 95 | 1.3.2.5 | **Test** | 5d | 2008-06-27 | 2008-07-03 |  | 10d |  |  |  | 64h |
| 96 | 1.3.2.5.1 | Performance/load test Manage Queries | 3d | 2008-06-27 | 2008-07-01 | 93 | 8d |  | start no earlier than 2008-06-13 | ET | 24h |
| 97 | 1.3.2.5.2 | Unit Tests/Functional Tests | 5d | 2008-06-27 | 2008-07-03 |  | 10d |  | finish no earlier than 2008-07-03 | ET | 40h |
| 98 | 1.3.2.6 | **Environment** | 3d? | 2008-06-19 | 2008-06-23 |  | 18d |  |  |  | 16h |
| 99 | 1.3.2.6.1 | Write Development Case | 1d? | 2008-06-23 | 2008-06-23 |  | 14d |  | start no earlier than 2008-06-23 | ET | 8h |
| 100 | 1.3.2.6.2 | Configure nightly build | 1d? | 2008-06-19 | 2008-06-19 |  | 16d |  | start no earlier than 2008-06-19 | ET | 8h |
| 101 | 1.3.2.7 | **Configuration and Change Management** | 2d? | 2008-06-16 | 2008-06-17 |  | 22d |  |  |  | 32h |
| 102 | 1.3.2.7.1 | Set up defect tracker | 1d? | 2008-06-16 | 2008-06-16 |  | 18d | 0d | start no earlier than 2008-06-16 | SJ; ET | 16h |
| 103 | 1.3.2.7.2 | Set up feature request tracker | 1d? | 2008-06-17 | 2008-06-17 | 102 | 18d |  |  | SJ; ET | 16h |
| 104 | 1.3.2.8 | **Deployment** | 2d | 2008-06-19 | 2008-06-20 |  | 19d |  |  |  | 16h |
| 105 | 1.3.2.8.1 | Deploy to DEV tier | 2d | 2008-06-19 | 2008-06-20 |  | 15d |  | start no earlier than 2008-06-19 | ET | 16h |
| 106 | 1.3.2.9 | Elaboration 2 Complete | 1d? | 2008-07-03 | 2008-07-03 |  | 8d |  | start no earlier than 2008-07-03 |  |  |

| ID | WBS | Task | Duration | Start | Finish | Predecessors | Total slack | Free slack | Constraint | Resources | Work |
| --- | --- | --- | --- | --- | --- | --- | --- | --- | --- | --- | --- |
| 107 | 1.3.3 | **Elaboration - Iteration 3** | 46d? | 2008-07-07 | 2008-09-08 | 66 | 0d |  |  |  | 1704h |
| 108 | 1.3.3.1 | **Project Management** | 5d | 2008-07-07 | 2008-07-11 |  | 35d |  |  |  | 48h |
| 109 | 1.3.3.1.1 | Schedule | 1d | 2008-07-07 | 2008-07-07 |  | 32d |  | finish no earlier than 2008-05-30 | SJ | 8h |
| 110 | 1.3.3.1.2 | Risk Management | 3d | 2008-07-07 | 2008-07-09 |  | 30d |  | finish no earlier than 2008-06-13 | SJ | 24h |
| 111 | 1.3.3.1.3 | E2 Iteration Assessment | 2d | 2008-07-10 | 2008-07-11 |  | 34d |  | start no earlier than 2008-07-10 | SJ | 16h |
| 112 | 1.3.3.2 | **Requirements** | 29d? | 2008-07-07 | 2008-08-14 |  | 11d |  |  |  | 192h |
| 113 | 1.3.3.2.1 | Draft Storyboard for caIntegrator2 | 2d | 2008-07-14 | 2008-07-15 |  | 32d |  | start no earlier than 2008-07-14 | SJ | 16h |
| 114 | 1.3.3.2.2 | Wireframes for Perform Analysis | 10d? | 2008-07-07 | 2008-07-18 |  | 13d | 0d | start no earlier than 2008-07-07 | WF | 80h |
| 115 | 1.3.3.2.3 | Requirements for View Images | 10d? | 2008-07-14 | 2008-07-25 |  | 20d | 4d | finish no earlier than 2008-07-25 | WF | 80h |
| 116 | 1.3.3.2.4 | Review Vision Document | 1d | 2008-07-31 | 2008-07-31 |  | 21d |  | finish no earlier than 2008-07-31 | SJ | 8h |
| 117 | 1.3.3.2.5 | External Review of Use Cases/Vision | 1d? | 2008-08-14 | 2008-08-14 |  | 11d |  | finish no earlier than 2008-08-14 | SJ | 8h |
| 118 | 1.3.3.3 | **Analysis and Design** | 18d? | 2008-07-07 | 2008-07-30 |  | 22d |  |  |  | 288h |
| 119 | 1.3.3.3.1 | Manage Queries-Supporting Class Model | 5d | 2008-07-07 | 2008-07-11 |  | 12d | 0d | start no earlier than 2008-07-07 | ET | 40h |
| 120 | 1.3.3.3.2 | Use-Case Design:Manage Queries | 3d | 2008-07-15 | 2008-07-17 | 119 | 30d |  | start no earlier than 2008-07-15 | ET | 24h |
| 121 | 1.3.3.3.3 | Use-Case Design: Perform Analysis | 4d | 2008-07-21 | 2008-07-24 | 114 | 7d | 0d | start no earlier than 2008-07-18 | ET | 32h |
| 122 | 1.3.3.3.4 | Model Changes (Data Type Support) | 3d? | 2008-07-07 | 2008-07-09 |  | 28d |  | finish no earlier than 2008-07-09 | MH | 24h |
| 123 | 1.3.3.3.5 | Model Changes (UoM, Range Search) | 3d? | 2008-07-07 | 2008-07-09 |  | 28d |  | start no earlier than 2008-07-07 | MH | 24h |
| 124 | 1.3.3.3.6 | Work with VCDE/Arc Mentor | 15d | 2008-07-07 | 2008-07-25 |  | 16d |  | start no earlier than 2008-07-07 | MH | 120h |
| 125 | 1.3.3.3.7 | Final Software Architecture Document | 3d | 2008-07-28 | 2008-07-30 |  | 13d |  | start no earlier than 2008-07-28 | MH | 24h |
| 126 | 1.3.3.4 | **Implementation** | 40d | 2008-07-07 | 2008-08-29 |  | 6d |  |  |  | 728h |
| 127 | 1.3.3.4.1 | **Implement Deploy Study** | 6d | 2008-07-07 | 2008-07-14 |  | 34d |  |  |  | 64h |
| 128 | 1.3.3.4.1.1 | Mapping functionality (Genomics, NCIA), Retrieve Array Data, Feedback from review | 5d | 2008-07-07 | 2008-07-11 |  | 26d |  |  | ET | 40h |
| 129 | 1.3.3.4.1.2 | Datatype changes | 3d | 2008-07-10 | 2008-07-14 |  | 22d | 0d | start no earlier than 2008-07-10 | ET | 24h |
| 130 | 1.3.3.4.2 | Security - Authentication & Authorization | 5d | 2008-07-07 | 2008-07-11 |  | 26d |  | start no earlier than 2008-07-07 | TJ | 40h |
| 131 | 1.3.3.4.3 | UI improvement for Deploy Study | 3d | 2008-07-15 | 2008-07-17 | 129 | 22d |  |  | MR | 24h |

| ID | WBS | Task | Duration | Start | Finish | Predecessors | Total slack | Constraint | Resources | Work |
| --- | --- | --- | --- | --- | --- | --- | --- | --- | --- | --- |
| 132 | 1.3.3.4.4 | **Implement Manage Queries** | 29d | 2008-07-14 | 2008-08-21 |  | 6d |  |  | 360h |
| 133 | 1.3.3.4.4.1 | Front End | 15d | 2008-07-14 | 2008-08-01 | 119 | 19d | start no earlier than 2008-07-14 | ML | 120h |
| 134 | 1.3.3.4.4.2 | General Service Tier (Query Creation & Persistence) | 10d | 2008-07-14 | 2008-07-25 | 120 | 16d | start no earlier than 2008-07-14 | TJ | 80h |
| 135 | 1.3.3.4.4.3 | ArrayDataService search functionality | 5d | 2008-07-25 | 2008-07-31 | 120 | 20d | start no earlier than 2008-07-25 | ET | 40h |
| 136 | 1.3.3.4.4.4 | Query to Hibernate Query translation | 15d | 2008-08-01 | 2008-08-21 |  | 5d | start no earlier than 2008-08-01 | TJ | 120h |
| 137 | 1.3.3.4.5 | **Implement Perform Data Analysis: GenePattern integration & KM Plot** | 20d | 2008-08-04 | 2008-08-29 |  | 6d |  |  | 160h |
| 138 | 1.3.3.4.5.1 | Analysis job definition | 5d | 2008-08-04 | 2008-08-08 | 121 | 15d | start no earlier than 2008-08-04 | ML | 40h |
| 139 | 1.3.3.4.5.2 | Service tier components for general analysis job management | 5d | 2008-08-18 | 2008-08-22 |  | 11d | start no earlier than 2008-08-18 | ML | 40h |
| 140 | 1.3.3.4.5.3 | KM Plot Implementation | 5d | 2008-08-25 | 2008-08-29 |  | 6d | start no earlier than 2008-08-25 | ML | 40h |
| 141 | 1.3.3.4.5.4 | GenePattern integration | 5d | 2008-08-22 | 2008-08-28 |  | 1d | start no earlier than 2008-08-22 | TJ | 40h |
| 142 | 1.3.3.4.6 | Browse Study | 5d | 2008-07-14 | 2008-07-18 |  | 30d | start no earlier than 2008-07-14 | TBD1 | 40h |
| 143 | 1.3.3.4.7 | View Images | 5d | 2008-08-01 | 2008-08-07 | 115 | 16d | start no earlier than 2008-08-01 | TBD1 | 40h |
| 144 | 1.3.3.5 | **Test** | 40d | 2008-07-14 | 2008-09-05 |  | 0d |  |  | 392h |
| 145 | 1.3.3.5.1 | Performance/load test Manage Queries | 3d | 2008-08-08 | 2008-08-12 |  | 13d | start no earlier than 2008-08-08 | TBD1 | 24h |
| 146 | 1.3.3.5.2 | Unit Tests/Functional Tests | 6d | 2008-08-18 | 2008-08-25 |  | 4d | start no earlier than 2008-08-18 | TBD1 | 48h |
| 147 | 1.3.3.5.3 | QA Team Test | 40d | 2008-07-14 | 2008-09-05 |  | 0d | finish no earlier than 2008-09-05 | TBD2 | 320h |
| 148 | 1.3.3.6 | **Environment** | 1d? | 2008-07-28 | 2008-07-28 |  | 24d |  |  | 8h |
| 149 | 1.3.3.6.1 | Configure nightly build | 1d? | 2008-07-28 | 2008-07-28 |  | 24d | start no earlier than 2008-07-28 | ET | 8h |
| 150 | 1.3.3.7 | **Configuration and Change Management** | 3d | 2008-07-14 | 2008-07-16 |  | 32d |  |  | 24h |
| 151 | 1.3.3.7.1 | Complete Feature Request/Tracking | 3d | 2008-07-14 | 2008-07-16 |  | 32d | start no earlier than 2008-07-14 | SJ | 24h |
| 152 | 1.3.3.8 | **Deployment** | 31d? | 2008-07-14 | 2008-08-25 |  | 4d |  |  | 24h |
| 153 | 1.3.3.8.1 | Deploy to DEV tier | 2d | 2008-07-14 | 2008-07-15 |  | 33d | start no earlier than 2008-07-14 | ET | 16h |
| 154 | 1.3.3.8.2 | Deploy to QA tier | 1d? | 2008-08-25 | 2008-08-25 |  | 4d | start no earlier than 2008-08-25 | TBD2 | 8h |
| 155 | 1.3.3.9 | Elaboration 3 Complete | 1d? | 2008-09-08 | 2008-09-08 | 147 | 0d | start no earlier than 2008-07-03 |  |  |
